# 2-软件开发-资源+WBS

How a schedule from MS Project changed from version to version. A marks actual dates.

## Version 1 (saved 2015-12-05, file 3-软件开发-资源+任务列表+WBS.mpp)

Note of the change: 初始化项目

| ID | WBS | Task | Duration | Start | Finish | Total float |
| --- | --- | --- | --- | --- | --- | --- |
| 1 | 1 | **项目范围规划** | 1d | 2015-11-16 | 2015-11-16 | 0d |
| 2 |  | 确定项目范围 | 1d | 2015-11-16 | 2015-11-16 | 0d |
| 3 |  | 获得项目所需资金 | 1d | 2015-11-16 | 2015-11-16 | 0d |
| 4 |  | 定义预备资源 | 1d | 2015-11-16 | 2015-11-16 | 0d |
| 5 |  | 获得核心资源 | 1d | 2015-11-16 | 2015-11-16 | 0d |
| 6 |  | 完成项目范围规划 | 1d | 2015-11-16 | 2015-11-16 | 0d |
| 7 | 2 | **分析/软件需求** | 1d | 2015-11-16 | 2015-11-16 | 0d |
| 8 |  | 行为需求分析 | 1d | 2015-11-16 | 2015-11-16 | 0d |
| 9 |  | 起草初步的软件规范 | 1d | 2015-11-16 | 2015-11-16 | 0d |
| 10 |  | 制定初步预算 | 1d | 2015-11-16 | 2015-11-16 | 0d |
| 11 |  | 工作组共同审阅软件规范/预算 | 1d | 2015-11-16 | 2015-11-16 | 0d |
| 12 |  | 根据反馈修改软件规范 | 1d | 2015-11-16 | 2015-11-16 | 0d |
| 13 |  | 制定交付期限 | 1d | 2015-11-16 | 2015-11-16 | 0d |
| 14 |  | 获得开展后续工作的批准(概念、期限和预算) | 1d | 2015-11-16 | 2015-11-16 | 0d |
| 15 |  | 获得所需资源 | 1d | 2015-11-16 | 2015-11-16 | 0d |
| 16 |  | 完成分析工作 | 1d | 2015-11-16 | 2015-11-16 | 0d |
| 17 | 3 | **设计** | 1d | 2015-11-16 | 2015-11-16 | 0d |
| 18 |  | 审阅初步的软件规范 | 1d | 2015-11-16 | 2015-11-16 | 0d |
| 19 |  | 制定功能规范 | 1d | 2015-11-16 | 2015-11-16 | 0d |
| 20 |  | 根据功能规范开发原型 | 1d | 2015-11-16 | 2015-11-16 | 0d |
| 21 |  | 审阅功能规范 | 1d | 2015-11-16 | 2015-11-16 | 0d |
| 22 |  | 根据反馈修改功能规范 | 1d | 2015-11-16 | 2015-11-16 | 0d |
| 23 |  | 获得开展后续工作的批准 | 1d | 2015-11-16 | 2015-11-16 | 0d |
| 24 |  | 完成设计工作 | 1d | 2015-11-16 | 2015-11-16 | 0d |
| 25 | 4 | **开发** | 1d | 2015-11-16 | 2015-11-16 | 0d |
| 26 |  | 审阅功能规范 | 1d | 2015-11-16 | 2015-11-16 | 0d |
| 27 |  | 确定模块化/分层设计参数 | 1d | 2015-11-16 | 2015-11-16 | 0d |
| 28 |  | 分派任务给开发人员 | 1d | 2015-11-16 | 2015-11-16 | 0d |
| 29 |  | 编写代码 | 1d | 2015-11-16 | 2015-11-16 | 0d |
| 30 |  | 开发人员测试(初步调试) | 1d | 2015-11-16 | 2015-11-16 | 0d |
| 31 |  | 完成开发工作 | 1d | 2015-11-16 | 2015-11-16 | 0d |
| 32 | 5 | **测试** | 1d | 2015-11-16 | 2015-11-16 | 0d |
| 33 |  | 根据产品规范制定单元测试计划 | 1d | 2015-11-16 | 2015-11-16 | 0d |
| 34 |  | 根据产品规范制定整体测试计划 | 1d | 2015-11-16 | 2015-11-16 | 0d |
| 35 | 5.3 | **单元测试** | 1d | 2015-11-16 | 2015-11-16 | 0d |
| 36 |  | 审阅模块化代码 | 1d | 2015-11-16 | 2015-11-16 | 0d |
| 37 |  | 测试组件模块是否符合产品规范 | 1d | 2015-11-16 | 2015-11-16 | 0d |
| 38 |  | 找出不符合产品规范的异常情况 | 1d | 2015-11-16 | 2015-11-16 | 0d |
| 39 |  | 修改代码 | 1d | 2015-11-16 | 2015-11-16 | 0d |
| 40 |  | 重新测试经过修改的代码 | 1d | 2015-11-16 | 2015-11-16 | 0d |
| 41 |  | 完成单元测试 | 1d | 2015-11-16 | 2015-11-16 | 0d |
| 42 | 5.4 | **整体测试** | 1d | 2015-11-16 | 2015-11-16 | 0d |
| 43 |  | 测试模块集成情况 | 1d | 2015-11-16 | 2015-11-16 | 0d |
| 44 |  | 找出不符合规范的异常情况 | 1d | 2015-11-16 | 2015-11-16 | 0d |
| 45 |  | 修改代码 | 1d | 2015-11-16 | 2015-11-16 | 0d |
| 46 |  | 重新测试经过修改的代码 | 1d | 2015-11-16 | 2015-11-16 | 0d |
| 47 |  | 完成整体测试 | 1d | 2015-11-16 | 2015-11-16 | 0d |
| 48 | 6 | **培训** | 1d | 2015-11-16 | 2015-11-16 | 0d |
| 49 |  | 制定针对最终用户的培训规范 | 1d | 2015-11-16 | 2015-11-16 | 0d |
| 50 |  | 制定针对产品技术支持人员的培训规范 | 1d | 2015-11-16 | 2015-11-16 | 0d |
| 51 |  | 确定培训方法(基于计算机的培训、教室授课等) | 1d | 2015-11-16 | 2015-11-16 | 0d |
| 52 |  | 编写培训材料 | 1d | 2015-11-16 | 2015-11-16 | 0d |
| 53 |  | 研究培训材料的可用性 | 1d | 2015-11-16 | 2015-11-16 | 0d |
| 54 |  | 对培训材料进行最后处理 | 1d | 2015-11-16 | 2015-11-16 | 0d |
| 55 |  | 制定培训机制 | 1d | 2015-11-16 | 2015-11-16 | 0d |
| 56 |  | 完成培训材料 | 1d | 2015-11-16 | 2015-11-16 | 0d |
| 57 | 7 | **文档** | 1d | 2015-11-16 | 2015-11-16 | 0d |
| 58 |  | 制定“帮助”规范 | 1d | 2015-11-16 | 2015-11-16 | 0d |
| 59 |  | 开发“帮助”系统 | 1d | 2015-11-16 | 2015-11-16 | 0d |
| 60 |  | 审阅“帮助”文档 | 1d | 2015-11-16 | 2015-11-16 | 0d |
| 61 |  | 根据反馈修改“帮助”文档 | 1d | 2015-11-16 | 2015-11-16 | 0d |
| 62 |  | 制定用户手册规范 | 1d | 2015-11-16 | 2015-11-16 | 0d |
| 63 |  | 编写用户手册 | 1d | 2015-11-16 | 2015-11-16 | 0d |
| 64 |  | 审阅所有的用户文档 | 1d | 2015-11-16 | 2015-11-16 | 0d |
| 65 |  | 根据反馈修改用户文档 | 1d | 2015-11-16 | 2015-11-16 | 0d |
| 66 |  | 完成文档 | 1d | 2015-11-16 | 2015-11-16 | 0d |
| 67 | 8 | **试生产** | 1d | 2015-11-16 | 2015-11-16 | 0d |
| 68 |  | 确定测试群体 | 1d | 2015-11-16 | 2015-11-16 | 0d |
| 69 |  | 确定软件分发机制 | 1d | 2015-11-16 | 2015-11-16 | 0d |
| 70 |  | 安装/部署软件 | 1d | 2015-11-16 | 2015-11-16 | 0d |

| ID | WBS | Task | Duration | Start | Finish | Total float |
| --- | --- | --- | --- | --- | --- | --- |
| 71 |  | 获得用户反馈 | 1d | 2015-11-16 | 2015-11-16 | 0d |
| 72 |  | 评估测试信息 | 1d | 2015-11-16 | 2015-11-16 | 0d |
| 73 |  | 完成试生产工作 | 1d | 2015-11-16 | 2015-11-16 | 0d |
| 74 | 9 | **部署** | 1d | 2015-11-16 | 2015-11-16 | 0d |
| 75 |  | 确定最终部署策略 | 1d | 2015-11-16 | 2015-11-16 | 0d |
| 76 |  | 确定部署方法 | 1d | 2015-11-16 | 2015-11-16 | 0d |
| 77 |  | 获得部署所需资源 | 1d | 2015-11-16 | 2015-11-16 | 0d |
| 78 |  | 培训技术支持人员 | 1d | 2015-11-16 | 2015-11-16 | 0d |
| 79 |  | 部署软件 | 1d | 2015-11-16 | 2015-11-16 | 0d |
| 80 |  | 完成部署工作 | 1d | 2015-11-16 | 2015-11-16 | 0d |
| 81 | 10 | **实施工作结束后的回顾** | 1d | 2015-11-16 | 2015-11-16 | 0d |
| 82 |  | 将经验教训记录存档 | 1d | 2015-11-16 | 2015-11-16 | 0d |
| 83 |  | 分发给工作组成员 | 1d | 2015-11-16 | 2015-11-16 | 0d |
| 84 |  | 建立软件维护小组 | 1d | 2015-11-16 | 2015-11-16 | 0d |
| 85 |  | 完成回顾 | 1d | 2015-11-16 | 2015-11-16 | 0d |
| 86 |  | 软件开发模板结束 | 1d | 2015-11-16 | 2015-11-16 | 0d |

## Version 2 (saved 2015-12-05, file 2-软件开发-资源+任务列表.mpp)

Note of the change: 初始化项目

Last finish stays 2015-11-16.

Changed:

| ID | Task | Duration |
| --- | --- | --- |
| 1 | 项目范围规划 | 1d → 1d? |
| 7 | 分析/软件需求 | 1d → 1d? |
| 17 | 设计 | 1d → 1d? |
| 25 | 开发 | 1d → 1d? |
| 32 | 测试 | 1d → 1d? |
| 35 | 单元测试 | 1d → 1d? |
| 42 | 整体测试 | 1d → 1d? |
| 48 | 培训 | 1d → 1d? |
| 57 | 文档 | 1d → 1d? |
| 67 | 试生产 | 1d → 1d? |
| 74 | 部署 | 1d → 1d? |
| 81 | 实施工作结束后的回顾 | 1d → 1d? |

## Version 3 (saved 2015-12-06, file 4-软件开发-资源+任务列表+WBS+依赖.mpp)

Note of the change: 初始化项目

Last finish 2015-11-16 → 2016-01-27 (+72d).

Changed:

| ID | Task | Start | Finish | Duration | Total float | Predecessors |
| --- | --- | --- | --- | --- | --- | --- |
| 1 | **项目范围规划** |  | 2015-11-16 → 2015-11-20 (+4d) | 1d? → 5d |  |  |
| 3 | 获得项目所需资金 | 2015-11-16 → 2015-11-17 (+1d) | 2015-11-16 → 2015-11-17 (+1d) |  |  | none → 2 |
| 4 | 定义预备资源 | 2015-11-16 → 2015-11-18 (+2d) | 2015-11-16 → 2015-11-18 (+2d) |  |  | none → 3 |
| 5 | 获得核心资源 | 2015-11-16 → 2015-11-19 (+3d) | 2015-11-16 → 2015-11-19 (+3d) |  |  | none → 4 |
| 6 | 完成项目范围规划 | 2015-11-16 → 2015-11-20 (+4d) | 2015-11-16 → 2015-11-20 (+4d) |  |  | none → 5 |
| 7 | **分析/软件需求** | 2015-11-16 → 2015-11-23 (+7d) | 2015-11-16 → 2015-12-03 (+17d) | 1d? → 9d |  |  |
| 8 | 行为需求分析 | 2015-11-16 → 2015-11-23 (+7d) | 2015-11-16 → 2015-11-23 (+7d) |  |  | none → 6 |
| 9 | 起草初步的软件规范 | 2015-11-16 → 2015-11-24 (+8d) | 2015-11-16 → 2015-11-24 (+8d) |  |  | none → 8 |
| 10 | 制定初步预算 | 2015-11-16 → 2015-11-25 (+9d) | 2015-11-16 → 2015-11-25 (+9d) |  |  | none → 9 |
| 11 | 工作组共同审阅软件规范/预算 | 2015-11-16 → 2015-11-26 (+10d) | 2015-11-16 → 2015-11-26 (+10d) |  |  | none → 10 |
| 12 | 根据反馈修改软件规范 | 2015-11-16 → 2015-11-27 (+11d) | 2015-11-16 → 2015-11-27 (+11d) |  |  | none → 11 |
| 13 | 制定交付期限 | 2015-11-16 → 2015-11-30 (+14d) | 2015-11-16 → 2015-11-30 (+14d) |  |  | none → 12 |
| 14 | 获得开展后续工作的批准(概念、期限和预算) | 2015-11-16 → 2015-12-01 (+15d) | 2015-11-16 → 2015-12-01 (+15d) |  |  | none → 13 |
| 15 | 获得所需资源 | 2015-11-16 → 2015-12-02 (+16d) | 2015-11-16 → 2015-12-02 (+16d) |  |  | none → 14 |
| 16 | 完成分析工作 | 2015-11-16 → 2015-12-03 (+17d) | 2015-11-16 → 2015-12-03 (+17d) |  |  | none → 15 |
| 17 | **设计** | 2015-11-16 → 2015-12-04 (+18d) | 2015-11-16 → 2015-12-14 (+28d) | 1d? → 7d |  |  |
| 18 | 审阅初步的软件规范 | 2015-11-16 → 2015-12-04 (+18d) | 2015-11-16 → 2015-12-04 (+18d) |  |  | none → 16 |
| 19 | 制定功能规范 | 2015-11-16 → 2015-12-07 (+21d) | 2015-11-16 → 2015-12-07 (+21d) |  |  | none → 18 |
| 20 | 根据功能规范开发原型 | 2015-11-16 → 2015-12-08 (+22d) | 2015-11-16 → 2015-12-08 (+22d) |  |  | none → 19 |
| 21 | 审阅功能规范 | 2015-11-16 → 2015-12-09 (+23d) | 2015-11-16 → 2015-12-09 (+23d) |  |  | none → 20 |
| 22 | 根据反馈修改功能规范 | 2015-11-16 → 2015-12-10 (+24d) | 2015-11-16 → 2015-12-10 (+24d) |  |  | none → 21 |
| 23 | 获得开展后续工作的批准 | 2015-11-16 → 2015-12-11 (+25d) | 2015-11-16 → 2015-12-11 (+25d) |  |  | none → 22 |
| 24 | 完成设计工作 | 2015-11-16 → 2015-12-14 (+28d) | 2015-11-16 → 2015-12-14 (+28d) |  |  | none → 23 |
| 25 | **开发** | 2015-11-16 → 2015-12-15 (+29d) | 2015-11-16 → 2015-12-22 (+36d) | 1d? → 5.25d |  |  |
| 26 | 审阅功能规范 | 2015-11-16 → 2015-12-15 (+29d) | 2015-11-16 → 2015-12-15 (+29d) |  |  | none → 24 |
| 27 | 确定模块化/分层设计参数 | 2015-11-16 → 2015-12-16 (+30d) | 2015-11-16 → 2015-12-16 (+30d) |  |  | none → 26 |
| 28 | 分派任务给开发人员 | 2015-11-16 → 2015-12-17 (+31d) | 2015-11-16 → 2015-12-17 (+31d) |  |  | none → 27 |
| 29 | 编写代码 | 2015-11-16 → 2015-12-18 (+32d) | 2015-11-16 → 2015-12-18 (+32d) |  |  | none → 28 |
| 30 | 开发人员测试(初步调试) | 2015-11-16 → 2015-12-18 (+32d) | 2015-11-16 → 2015-12-21 (+35d) |  |  | none → 29FS-7.5% |
| 31 | 完成开发工作 | 2015-11-16 → 2015-12-21 (+35d) | 2015-11-16 → 2015-12-22 (+36d) |  |  | none → 30 |
| 32 | **测试** | 2015-11-16 → 2015-12-15 (+29d) | 2015-11-16 → 2016-01-06 (+51d) | 1d? → 16.25d | 0d → 4.25d |  |
| 33 | 根据产品规范制定单元测试计划 | 2015-11-16 → 2015-12-15 (+29d) | 2015-11-16 → 2015-12-15 (+29d) |  | 0d → 4.25d | none → 24 |
| 34 | 根据产品规范制定整体测试计划 | 2015-11-16 → 2015-12-15 (+29d) | 2015-11-16 → 2015-12-15 (+29d) |  | 0d → 30.25d | none → 24 |
| 35 | **单元测试** | 2015-11-16 → 2015-12-22 (+36d) | 2015-11-16 → 2015-12-30 (+44d) | 1d? → 6d |  |  |
| 36 | 审阅模块化代码 | 2015-11-16 → 2015-12-22 (+36d) | 2015-11-16 → 2015-12-23 (+37d) |  |  | none → 33, 31 |
| 37 | 测试组件模块是否符合产品规范 | 2015-11-16 → 2015-12-23 (+37d) | 2015-11-16 → 2015-12-24 (+38d) |  |  | none → 31, 36 |
| 38 | 找出不符合产品规范的异常情况 | 2015-11-16 → 2015-12-24 (+38d) | 2015-11-16 → 2015-12-25 (+39d) |  |  | none → 37 |
| 39 | 修改代码 | 2015-11-16 → 2015-12-25 (+39d) | 2015-11-16 → 2015-12-28 (+42d) |  |  | none → 38 |
| 40 | 重新测试经过修改的代码 | 2015-11-16 → 2015-12-28 (+42d) | 2015-11-16 → 2015-12-29 (+43d) |  |  | none → 39 |
| 41 | 完成单元测试 | 2015-11-16 → 2015-12-29 (+43d) | 2015-11-16 → 2015-12-30 (+44d) |  |  | none → 40 |
| 42 | **整体测试** | 2015-11-16 → 2015-12-30 (+44d) | 2015-11-16 → 2016-01-06 (+51d) | 1d? → 5d |  |  |
| 43 | 测试模块集成情况 | 2015-11-16 → 2015-12-30 (+44d) | 2015-11-16 → 2015-12-31 (+45d) |  |  | none → 41 |
| 44 | 找出不符合规范的异常情况 | 2015-11-16 → 2015-12-31 (+45d) | 2015-11-16 → 2016-01-01 (+46d) |  |  | none → 43 |
| 45 | 修改代码 | 2015-11-16 → 2016-01-01 (+46d) | 2015-11-16 → 2016-01-04 (+49d) |  |  | none → 44 |
| 46 | 重新测试经过修改的代码 | 2015-11-16 → 2016-01-04 (+49d) | 2015-11-16 → 2016-01-05 (+50d) |  |  | none → 45 |
| 47 | 完成整体测试 | 2015-11-16 → 2016-01-05 (+50d) | 2015-11-16 → 2016-01-06 (+51d) |  |  | none → 46 |
| 48 | **培训** | 2015-11-16 → 2015-12-15 (+29d) | 2015-11-16 → 2015-12-29 (+43d) | 1d? → 10.25d | 0d → 6d |  |
| 49 | 制定针对最终用户的培训规范 | 2015-11-16 → 2015-12-15 (+29d) | 2015-11-16 → 2015-12-15 (+29d) |  | 0d → 10.25d | none → 24 |
| 50 | 制定针对产品技术支持人员的培训规范 | 2015-11-16 → 2015-12-15 (+29d) | 2015-11-16 → 2015-12-15 (+29d) |  | 0d → 10.25d | none → 24 |
| 51 | 确定培训方法(基于计算机的培训、教室授课等) | 2015-11-16 → 2015-12-15 (+29d) | 2015-11-16 → 2015-12-15 (+29d) |  | 0d → 10.25d | none → 24 |
| 52 | 编写培训材料 | 2015-11-16 → 2015-12-22 (+36d) | 2015-11-16 → 2015-12-23 (+37d) |  | 0d → 6d | none → 49, 31, 50, 51 |
| 53 | 研究培训材料的可用性 | 2015-11-16 → 2015-12-23 (+37d) | 2015-11-16 → 2015-12-24 (+38d) |  | 0d → 6d | none → 52 |
| 54 | 对培训材料进行最后处理 | 2015-11-16 → 2015-12-24 (+38d) | 2015-11-16 → 2015-12-25 (+39d) |  | 0d → 6d | none → 53 |
| 55 | 制定培训机制 | 2015-11-16 → 2015-12-25 (+39d) | 2015-11-16 → 2015-12-28 (+42d) |  | 0d → 6d | none → 54 |
| 56 | 完成培训材料 | 2015-11-16 → 2015-12-28 (+42d) | 2015-11-16 → 2015-12-29 (+43d) |  | 0d → 6d | none → 55 |
| 57 | **文档** | 2015-11-16 → 2015-12-15 (+29d) | 2015-11-16 → 2015-12-24 (+38d) | 1d? → 7.5d | 0d → 8.75d |  |
| 58 | 制定“帮助”规范 | 2015-11-16 → 2015-12-15 (+29d) | 2015-11-16 → 2015-12-15 (+29d) |  | 0d → 11.25d | none → 24 |
| 59 | 开发“帮助”系统 | 2015-11-16 → 2015-12-18 (+32d) | 2015-11-16 → 2015-12-21 (+35d) |  | 0d → 8.75d | none → 58, 29FS-5% |
| 60 | 审阅“帮助”文档 | 2015-11-16 → 2015-12-21 (+35d) | 2015-11-16 → 2015-12-22 (+36d) |  | 0d → 8.75d | none → 59 |
| 61 | 根据反馈修改“帮助”文档 | 2015-11-16 → 2015-12-22 (+36d) | 2015-11-16 → 2015-12-23 (+37d) |  | 0d → 8.75d | none → 60 |
| 62 | 制定用户手册规范 | 2015-11-16 → 2015-12-15 (+29d) | 2015-11-16 → 2015-12-15 (+29d) |  | 0d → 11.25d | none → 24 |
| 63 | 编写用户手册 | 2015-11-16 → 2015-12-18 (+32d) | 2015-11-16 → 2015-12-21 (+35d) |  | 0d → 8.75d | none → 62, 29FS-5% |
| 64 | 审阅所有的用户文档 | 2015-11-16 → 2015-12-21 (+35d) | 2015-11-16 → 2015-12-22 (+36d) |  | 0d → 8.75d | none → 63 |
| 65 | 根据反馈修改用户文档 | 2015-11-16 → 2015-12-22 (+36d) | 2015-11-16 → 2015-12-23 (+37d) |  | 0d → 8.75d | none → 64 |
| 66 | 完成文档 | 2015-11-16 → 2015-12-23 (+37d) | 2015-11-16 → 2015-12-24 (+38d) |  | 0d → 8.75d | none → 65, 61 |
| 67 | **试生产** | 2015-11-16 → 2015-12-04 (+18d) | 2015-11-16 → 2016-01-12 (+57d) | 1d? → 27.25d |  |  |
| 68 | 确定测试群体 | 2015-11-16 → 2015-12-04 (+18d) | 2015-11-16 → 2015-12-04 (+18d) |  | 0d → 21.25d | none → 16 |
| 69 | 确定软件分发机制 | 2015-11-16 → 2015-12-07 (+21d) | 2015-11-16 → 2015-12-07 (+21d) |  | 0d → 21.25d | none → 68 |
| 70 | 安装/部署软件 | 2015-11-16 → 2016-01-06 (+51d) | 2015-11-16 → 2016-01-07 (+52d) |  |  | none → 47, 69, 66, 56 |
| 71 | 获得用户反馈 | 2015-11-16 → 2016-01-07 (+52d) | 2015-11-16 → 2016-01-08 (+53d) |  |  | none → 70 |

| ID | Task | Start | Finish | Duration | Predecessors |
| --- | --- | --- | --- | --- | --- |
| 72 | 评估测试信息 | 2015-11-16 → 2016-01-08 (+53d) | 2015-11-16 → 2016-01-11 (+56d) |  | none → 71 |
| 73 | 完成试生产工作 | 2015-11-16 → 2016-01-11 (+56d) | 2015-11-16 → 2016-01-12 (+57d) |  | none → 72 |
| 74 | **部署** | 2015-11-16 → 2016-01-12 (+57d) | 2015-11-16 → 2016-01-20 (+65d) | 1d? → 6d |  |
| 75 | 确定最终部署策略 | 2015-11-16 → 2016-01-12 (+57d) | 2015-11-16 → 2016-01-13 (+58d) |  | none → 73 |
| 76 | 确定部署方法 | 2015-11-16 → 2016-01-13 (+58d) | 2015-11-16 → 2016-01-14 (+59d) |  | none → 75 |
| 77 | 获得部署所需资源 | 2015-11-16 → 2016-01-14 (+59d) | 2015-11-16 → 2016-01-15 (+60d) |  | none → 76 |
| 78 | 培训技术支持人员 | 2015-11-16 → 2016-01-15 (+60d) | 2015-11-16 → 2016-01-18 (+63d) |  | none → 77 |
| 79 | 部署软件 | 2015-11-16 → 2016-01-18 (+63d) | 2015-11-16 → 2016-01-19 (+64d) |  | none → 78 |
| 80 | 完成部署工作 | 2015-11-16 → 2016-01-19 (+64d) | 2015-11-16 → 2016-01-20 (+65d) |  | none → 79 |
| 81 | **实施工作结束后的回顾** | 2015-11-16 → 2016-01-20 (+65d) | 2015-11-16 → 2016-01-26 (+71d) | 1d? → 4d |  |
| 82 | 将经验教训记录存档 | 2015-11-16 → 2016-01-20 (+65d) | 2015-11-16 → 2016-01-21 (+66d) |  | none → 80 |
| 83 | 分发给工作组成员 | 2015-11-16 → 2016-01-21 (+66d) | 2015-11-16 → 2016-01-22 (+67d) |  | none → 82 |
| 84 | 建立软件维护小组 | 2015-11-16 → 2016-01-22 (+67d) | 2015-11-16 → 2016-01-25 (+70d) |  | none → 83 |
| 85 | 完成回顾 | 2015-11-16 → 2016-01-25 (+70d) | 2015-11-16 → 2016-01-26 (+71d) |  | none → 84 |
| 86 | 软件开发模板结束 | 2015-11-16 → 2016-01-26 (+71d) | 2015-11-16 → 2016-01-27 (+72d) |  | none → 85 |

## Version 4 (saved 2015-12-06, file 5-软件开发-资源+任务列表+WBS+依赖+资源分配.mpp)

Note of the change: 初始化项目

Last finish stays 2016-01-27.

Changed:

| ID | Task | Other |
| --- | --- | --- |
| 2 | 确定项目范围 | resources none → 管理人员 |
| 3 | 获得项目所需资金 | resources none → 管理人员 |
| 4 | 定义预备资源 | resources none → 项目经理 |
| 5 | 获得核心资源 | resources none → 项目经理 |
| 8 | 行为需求分析 | resources none → 分析人员 |
| 9 | 起草初步的软件规范 | resources none → 分析人员 |
| 10 | 制定初步预算 | resources none → 项目经理 |
| 11 | 工作组共同审阅软件规范/预算 | resources none → 项目经理; 分析人员 |
| 12 | 根据反馈修改软件规范 | resources none → 分析人员 |
| 13 | 制定交付期限 | resources none → 项目经理 |
| 14 | 获得开展后续工作的批准(概念、期限和预算) | resources none → 管理人员; 项目经理 |
| 15 | 获得所需资源 | resources none → 项目经理 |
| 18 | 审阅初步的软件规范 | resources none → 分析人员 |
| 19 | 制定功能规范 | resources none → 分析人员 |
| 20 | 根据功能规范开发原型 | resources none → 分析人员 |
| 21 | 审阅功能规范 | resources none → 管理人员 |
| 22 | 根据反馈修改功能规范 | resources none → 管理人员 |
| 23 | 获得开展后续工作的批准 | resources none → 管理人员; 项目经理 |
| 26 | 审阅功能规范 | resources none → 开发人员 |
| 27 | 确定模块化/分层设计参数 | resources none → 开发人员 |
| 28 | 分派任务给开发人员 | resources none → 开发人员 |
| 29 | 编写代码 | resources none → 开发人员 |
| 30 | 开发人员测试(初步调试) | resources none → 开发人员 |
| 33 | 根据产品规范制定单元测试计划 | resources none → 测试人员 |
| 34 | 根据产品规范制定整体测试计划 | resources none → 测试人员 |
| 36 | 审阅模块化代码 | resources none → 测试人员 |
| 37 | 测试组件模块是否符合产品规范 | resources none → 测试人员 |
| 38 | 找出不符合产品规范的异常情况 | resources none → 测试人员 |
| 39 | 修改代码 | resources none → 测试人员 |
| 40 | 重新测试经过修改的代码 | resources none → 测试人员 |
| 43 | 测试模块集成情况 | resources none → 测试人员 |
| 44 | 找出不符合规范的异常情况 | resources none → 测试人员 |
| 45 | 修改代码 | resources none → 测试人员 |
| 46 | 重新测试经过修改的代码 | resources none → 测试人员 |
| 49 | 制定针对最终用户的培训规范 | resources none → 讲师 |
| 50 | 制定针对产品技术支持人员的培训规范 | resources none → 讲师 |
| 51 | 确定培训方法(基于计算机的培训、教室授课等) | resources none → 讲师 |
| 52 | 编写培训材料 | resources none → 讲师 |
| 53 | 研究培训材料的可用性 | resources none → 讲师 |
| 54 | 对培训材料进行最后处理 | resources none → 讲师 |
| 55 | 制定培训机制 | resources none → 讲师 |
| 58 | 制定“帮助”规范 | resources none → 技术联络人员 |
| 59 | 开发“帮助”系统 | resources none → 技术联络人员 |
| 60 | 审阅“帮助”文档 | resources none → 技术联络人员 |
| 61 | 根据反馈修改“帮助”文档 | resources none → 技术联络人员 |
| 62 | 制定用户手册规范 | resources none → 技术联络人员 |
| 63 | 编写用户手册 | resources none → 技术联络人员 |
| 64 | 审阅所有的用户文档 | resources none → 技术联络人员 |
| 65 | 根据反馈修改用户文档 | resources none → 技术联络人员 |
| 68 | 确定测试群体 | resources none → 项目经理 |
| 70 | 安装/部署软件 | resources none → 部署小组 |
| 71 | 获得用户反馈 | resources none → 部署小组 |
| 72 | 评估测试信息 | resources none → 部署小组 |
| 75 | 确定最终部署策略 | resources none → 部署小组 |
| 76 | 确定部署方法 | resources none → 部署小组 |
| 77 | 获得部署所需资源 | resources none → 部署小组 |
| 78 | 培训技术支持人员 | resources none → 部署小组 |
| 79 | 部署软件 | resources none → 部署小组 |
| 82 | 将经验教训记录存档 | resources none → 项目经理 |
| 83 | 分发给工作组成员 | resources none → 项目经理 |
| 84 | 建立软件维护小组 | resources none → 项目经理 |

## Version 5 (saved 2015-12-06, file 6-软件开发-资源+任务列表+WBS+依赖+资源分配+工期.mpp)

Note of the change: 初始化项目

Last finish 2016-01-27 → 2016-03-28 (+61d).

Changed:

| ID | Task | Start | Finish | Duration | Total float |
| --- | --- | --- | --- | --- | --- |
| 1 | **项目范围规划** |  | 2015-11-20 → 2015-11-19 (-1d) | 5d → 3.5d |  |
| 2 | 确定项目范围 |  |  | 1d → 4h |  |
| 3 | 获得项目所需资金 | 2015-11-17 → 2015-11-16 (-1d) |  |  |  |
| 4 | 定义预备资源 | 2015-11-18 → 2015-11-17 (-1d) |  |  |  |
| 5 | 获得核心资源 | 2015-11-19 → 2015-11-18 (-1d) |  |  |  |
| 6 | 完成项目范围规划 | 2015-11-20 → 2015-11-19 (-1d) | 2015-11-20 → 2015-11-19 (-1d) | 1d → 0d |  |
| 7 | **分析/软件需求** | 2015-11-23 → 2015-11-19 (-4d) | 2015-12-03 → 2015-12-09 (+6d) | 9d → 14d |  |
| 8 | 行为需求分析 | 2015-11-23 → 2015-11-19 (-4d) | 2015-11-23 → 2015-11-26 (+3d) | 1d → 5d |  |
| 9 | 起草初步的软件规范 | 2015-11-24 → 2015-11-26 (+2d) | 2015-11-24 → 2015-12-01 (+7d) | 1d → 3d |  |
| 10 | 制定初步预算 | 2015-11-25 → 2015-12-01 (+6d) | 2015-11-25 → 2015-12-03 (+8d) | 1d → 2d |  |
| 11 | 工作组共同审阅软件规范/预算 | 2015-11-26 → 2015-12-03 (+7d) | 2015-11-26 → 2015-12-03 (+7d) | 1d → 4h |  |
| 12 | 根据反馈修改软件规范 | 2015-11-27 → 2015-12-04 (+7d) | 2015-11-27 → 2015-12-04 (+7d) |  |  |
| 13 | 制定交付期限 | 2015-11-30 → 2015-12-07 (+7d) | 2015-11-30 → 2015-12-07 (+7d) |  |  |
| 14 | 获得开展后续工作的批准(概念、期限和预算) | 2015-12-01 → 2015-12-08 (+7d) | 2015-12-01 → 2015-12-08 (+7d) | 1d → 4h |  |
| 15 | 获得所需资源 | 2015-12-02 → 2015-12-08 (+6d) | 2015-12-02 → 2015-12-09 (+7d) |  |  |
| 16 | 完成分析工作 | 2015-12-03 → 2015-12-09 (+6d) | 2015-12-03 → 2015-12-09 (+6d) | 1d → 0d |  |
| 17 | **设计** | 2015-12-04 → 2015-12-09 (+5d) | 2015-12-14 → 2015-12-29 (+15d) | 7d → 14.5d |  |
| 18 | 审阅初步的软件规范 | 2015-12-04 → 2015-12-09 (+5d) | 2015-12-04 → 2015-12-11 (+7d) | 1d → 2d |  |
| 19 | 制定功能规范 | 2015-12-07 → 2015-12-11 (+4d) | 2015-12-07 → 2015-12-18 (+11d) | 1d → 5d |  |
| 20 | 根据功能规范开发原型 | 2015-12-08 → 2015-12-18 (+10d) | 2015-12-08 → 2015-12-24 (+16d) | 1d → 4d |  |
| 21 | 审阅功能规范 | 2015-12-09 → 2015-12-24 (+15d) | 2015-12-09 → 2015-12-28 (+19d) | 1d → 2d |  |
| 22 | 根据反馈修改功能规范 | 2015-12-10 → 2015-12-28 (+18d) | 2015-12-10 → 2015-12-29 (+19d) |  |  |
| 23 | 获得开展后续工作的批准 | 2015-12-11 → 2015-12-29 (+18d) | 2015-12-11 → 2015-12-29 (+18d) | 1d → 4h |  |
| 24 | 完成设计工作 | 2015-12-14 → 2015-12-29 (+15d) | 2015-12-14 → 2015-12-29 (+15d) | 1d → 0d |  |
| 25 | **开发** | 2015-12-15 → 2015-12-30 (+15d) | 2015-12-22 → 2016-01-28 (+37d) | 5.25d → 21.75d |  |
| 26 | 审阅功能规范 | 2015-12-15 → 2015-12-30 (+15d) | 2015-12-15 → 2015-12-30 (+15d) |  |  |
| 27 | 确定模块化/分层设计参数 | 2015-12-16 → 2015-12-31 (+15d) | 2015-12-16 → 2015-12-31 (+15d) |  |  |
| 28 | 分派任务给开发人员 | 2015-12-17 → 2016-01-01 (+15d) | 2015-12-17 → 2016-01-01 (+15d) |  |  |
| 29 | 编写代码 | 2015-12-18 → 2016-01-04 (+17d) | 2015-12-18 → 2016-01-22 (+35d) | 1d → 15d |  |
| 30 | 开发人员测试(初步调试) | 2015-12-18 → 2016-01-07 (+20d) | 2015-12-21 → 2016-01-28 (+38d) | 1d → 15d |  |
| 31 | 完成开发工作 | 2015-12-21 → 2016-01-28 (+38d) | 2015-12-22 → 2016-01-28 (+37d) | 1d → 0d |  |
| 32 | **测试** | 2015-12-15 → 2015-12-30 (+15d) | 2016-01-06 → 2016-03-07 (+61d) | 16.25d → 48.75d | 4.25d → 15d |
| 33 | 根据产品规范制定单元测试计划 | 2015-12-15 → 2015-12-30 (+15d) | 2015-12-15 → 2016-01-04 (+20d) | 1d → 4d | 4.25d → 17.75d |
| 34 | 根据产品规范制定整体测试计划 | 2015-12-15 → 2015-12-30 (+15d) | 2015-12-15 → 2016-01-04 (+20d) | 1d → 4d | 30.25d → 59.75d |
| 35 | **单元测试** | 2015-12-22 → 2016-01-28 (+37d) | 2015-12-30 → 2016-02-18 (+50d) | 6d → 15d |  |
| 36 | 审阅模块化代码 | 2015-12-22 → 2016-01-28 (+37d) | 2015-12-23 → 2016-02-04 (+43d) | 1d → 5d |  |
| 37 | 测试组件模块是否符合产品规范 | 2015-12-23 → 2016-02-04 (+43d) | 2015-12-24 → 2016-02-08 (+46d) | 1d → 2d |  |
| 38 | 找出不符合产品规范的异常情况 | 2015-12-24 → 2016-02-08 (+46d) | 2015-12-25 → 2016-02-11 (+48d) | 1d → 3d |  |
| 39 | 修改代码 | 2015-12-25 → 2016-02-11 (+48d) | 2015-12-28 → 2016-02-16 (+50d) | 1d → 3d |  |
| 40 | 重新测试经过修改的代码 | 2015-12-28 → 2016-02-16 (+50d) | 2015-12-29 → 2016-02-18 (+51d) | 1d → 2d |  |
| 41 | 完成单元测试 | 2015-12-29 → 2016-02-18 (+51d) | 2015-12-30 → 2016-02-18 (+50d) | 1d → 0d |  |
| 42 | **整体测试** | 2015-12-30 → 2016-02-18 (+50d) | 2016-01-06 → 2016-03-07 (+61d) | 5d → 12d |  |
| 43 | 测试模块集成情况 | 2015-12-30 → 2016-02-18 (+50d) | 2015-12-31 → 2016-02-25 (+56d) | 1d → 5d |  |
| 44 | 找出不符合规范的异常情况 | 2015-12-31 → 2016-02-25 (+56d) | 2016-01-01 → 2016-02-29 (+59d) | 1d → 2d |  |
| 45 | 修改代码 | 2016-01-01 → 2016-02-29 (+59d) | 2016-01-04 → 2016-03-03 (+59d) | 1d → 3d |  |
| 46 | 重新测试经过修改的代码 | 2016-01-04 → 2016-03-03 (+59d) | 2016-01-05 → 2016-03-07 (+62d) | 1d → 2d |  |
| 47 | 完成整体测试 | 2016-01-05 → 2016-03-07 (+62d) | 2016-01-06 → 2016-03-07 (+61d) | 1d → 0d |  |
| 48 | **培训** | 2015-12-15 → 2015-12-30 (+15d) | 2015-12-29 → 2016-03-02 (+64d) | 10.25d → 45.75d | 6d → 3d |
| 49 | 制定针对最终用户的培训规范 | 2015-12-15 → 2015-12-30 (+15d) | 2015-12-15 → 2016-01-01 (+17d) | 1d → 3d | 10.25d → 21.75d |
| 50 | 制定针对产品技术支持人员的培训规范 | 2015-12-15 → 2015-12-30 (+15d) | 2015-12-15 → 2016-01-01 (+17d) | 1d → 3d | 10.25d → 21.75d |
| 51 | 确定培训方法(基于计算机的培训、教室授课等) | 2015-12-15 → 2015-12-30 (+15d) | 2015-12-15 → 2015-12-31 (+16d) | 1d → 2d | 10.25d → 22.75d |
| 52 | 编写培训材料 | 2015-12-22 → 2016-01-28 (+37d) | 2015-12-23 → 2016-02-18 (+57d) | 1d → 3w | 6d → 3d |
| 53 | 研究培训材料的可用性 | 2015-12-23 → 2016-02-18 (+57d) | 2015-12-24 → 2016-02-24 (+62d) | 1d → 4d | 6d → 3d |
| 54 | 对培训材料进行最后处理 | 2015-12-24 → 2016-02-24 (+62d) | 2015-12-25 → 2016-02-29 (+66d) | 1d → 3d | 6d → 3d |
| 55 | 制定培训机制 | 2015-12-25 → 2016-02-29 (+66d) | 2015-12-28 → 2016-03-02 (+65d) | 1d → 2d | 6d → 3d |
| 56 | 完成培训材料 | 2015-12-28 → 2016-03-02 (+65d) | 2015-12-29 → 2016-03-02 (+64d) | 1d → 0d | 6d → 3d |
| 57 | **文档** | 2015-12-15 → 2015-12-30 (+15d) | 2015-12-24 → 2016-02-10 (+48d) | 7.5d → 30.5d | 8.75d → 18.25d |
| 58 | 制定“帮助”规范 | 2015-12-15 → 2015-12-30 (+15d) | 2015-12-15 → 2015-12-30 (+15d) |  | 11.25d → 27.75d |
| 59 | 开发“帮助”系统 | 2015-12-18 → 2016-01-13 (+26d) | 2015-12-21 → 2016-02-03 (+44d) | 1d → 3w | 8.75d → 18.25d |
| 60 | 审阅“帮助”文档 | 2015-12-21 → 2016-02-03 (+44d) | 2015-12-22 → 2016-02-08 (+48d) | 1d → 3d | 8.75d → 18.25d |
| 61 | 根据反馈修改“帮助”文档 | 2015-12-22 → 2016-02-08 (+48d) | 2015-12-23 → 2016-02-10 (+49d) | 1d → 2d | 8.75d → 18.25d |
| 62 | 制定用户手册规范 | 2015-12-15 → 2015-12-30 (+15d) | 2015-12-15 → 2015-12-31 (+16d) | 1d → 2d | 11.25d → 27.75d |
| 63 | 编写用户手册 | 2015-12-18 → 2016-01-13 (+26d) | 2015-12-21 → 2016-02-03 (+44d) | 1d → 3w | 8.75d → 19.25d |
| 64 | 审阅所有的用户文档 | 2015-12-21 → 2016-02-03 (+44d) | 2015-12-22 → 2016-02-05 (+45d) | 1d → 2d | 8.75d → 19.25d |
| 65 | 根据反馈修改用户文档 | 2015-12-22 → 2016-02-05 (+45d) | 2015-12-23 → 2016-02-09 (+48d) | 1d → 2d | 8.75d → 19.25d |
| 66 | 完成文档 | 2015-12-23 → 2016-02-10 (+49d) | 2015-12-24 → 2016-02-10 (+48d) | 1d → 0d | 8.75d → 18.25d |
| 67 | **试生产** | 2015-12-04 → 2015-12-09 (+5d) | 2016-01-12 → 2016-03-16 (+64d) | 27.25d → 70.25d |  |
| 68 | 确定测试群体 | 2015-12-04 → 2015-12-09 (+5d) | 2015-12-04 → 2015-12-10 (+6d) |  | 21.25d → 61.25d |
| 69 | 确定软件分发机制 | 2015-12-07 → 2015-12-10 (+3d) | 2015-12-07 → 2015-12-11 (+4d) |  | 21.25d → 61.25d |
| 70 | 安装/部署软件 | 2016-01-06 → 2016-03-07 (+61d) | 2016-01-07 → 2016-03-08 (+61d) |  |  |

| ID | Task | Start | Finish | Duration |
| --- | --- | --- | --- | --- |
| 71 | 获得用户反馈 | 2016-01-07 → 2016-03-08 (+61d) | 2016-01-08 → 2016-03-15 (+67d) | 1d → 1w |
| 72 | 评估测试信息 | 2016-01-08 → 2016-03-15 (+67d) | 2016-01-11 → 2016-03-16 (+65d) |  |
| 73 | 完成试生产工作 | 2016-01-11 → 2016-03-16 (+65d) | 2016-01-12 → 2016-03-16 (+64d) | 1d → 0d |
| 74 | **部署** | 2016-01-12 → 2016-03-16 (+64d) | 2016-01-20 → 2016-03-23 (+63d) | 6d → 5d |
| 75 | 确定最终部署策略 | 2016-01-12 → 2016-03-16 (+64d) | 2016-01-13 → 2016-03-17 (+64d) |  |
| 76 | 确定部署方法 | 2016-01-13 → 2016-03-17 (+64d) | 2016-01-14 → 2016-03-18 (+64d) |  |
| 77 | 获得部署所需资源 | 2016-01-14 → 2016-03-18 (+64d) | 2016-01-15 → 2016-03-21 (+66d) |  |
| 78 | 培训技术支持人员 | 2016-01-15 → 2016-03-21 (+66d) | 2016-01-18 → 2016-03-22 (+64d) |  |
| 79 | 部署软件 | 2016-01-18 → 2016-03-22 (+64d) | 2016-01-19 → 2016-03-23 (+64d) |  |
| 80 | 完成部署工作 | 2016-01-19 → 2016-03-23 (+64d) | 2016-01-20 → 2016-03-23 (+63d) | 1d → 0d |
| 81 | **实施工作结束后的回顾** | 2016-01-20 → 2016-03-23 (+63d) | 2016-01-26 → 2016-03-28 (+62d) | 4d → 3d |
| 82 | 将经验教训记录存档 | 2016-01-20 → 2016-03-23 (+63d) | 2016-01-21 → 2016-03-24 (+63d) |  |
| 83 | 分发给工作组成员 | 2016-01-21 → 2016-03-24 (+63d) | 2016-01-22 → 2016-03-25 (+63d) |  |
| 84 | 建立软件维护小组 | 2016-01-22 → 2016-03-25 (+63d) | 2016-01-25 → 2016-03-28 (+63d) |  |
| 85 | 完成回顾 | 2016-01-25 → 2016-03-28 (+63d) | 2016-01-26 → 2016-03-28 (+62d) | 1d → 0d |
| 86 | 软件开发模板结束 | 2016-01-26 → 2016-03-28 (+62d) | 2016-01-27 → 2016-03-28 (+61d) | 1d → 0d |

## Version 6 (saved 2015-12-06, file 7-软件开发-资源+任务列表+WBS+依赖+资源分配+工期+比较基准.mpp)

Note of the change: 初始化项目

Last finish stays 2016-03-28.

Changed:

| ID | Task | Other |
| --- | --- | --- |
| 1 | **项目范围规划** | baseline start none → 2015-11-16; baseline finish none → 2015-11-19 |
| 2 | 确定项目范围 | baseline start none → 2015-11-16; baseline finish none → 2015-11-16 |
| 3 | 获得项目所需资金 | baseline start none → 2015-11-16; baseline finish none → 2015-11-17 |
| 4 | 定义预备资源 | baseline start none → 2015-11-17; baseline finish none → 2015-11-18 |
| 5 | 获得核心资源 | baseline start none → 2015-11-18; baseline finish none → 2015-11-19 |
| 6 | 完成项目范围规划 | baseline start none → 2015-11-19; baseline finish none → 2015-11-19 |
| 7 | **分析/软件需求** | baseline start none → 2015-11-19; baseline finish none → 2015-12-09 |
| 8 | 行为需求分析 | baseline start none → 2015-11-19; baseline finish none → 2015-11-26 |
| 9 | 起草初步的软件规范 | baseline start none → 2015-11-26; baseline finish none → 2015-12-01 |
| 10 | 制定初步预算 | baseline start none → 2015-12-01; baseline finish none → 2015-12-03 |
| 11 | 工作组共同审阅软件规范/预算 | baseline start none → 2015-12-03; baseline finish none → 2015-12-03 |
| 12 | 根据反馈修改软件规范 | baseline start none → 2015-12-04; baseline finish none → 2015-12-04 |
| 13 | 制定交付期限 | baseline start none → 2015-12-07; baseline finish none → 2015-12-07 |
| 14 | 获得开展后续工作的批准(概念、期限和预算) | baseline start none → 2015-12-08; baseline finish none → 2015-12-08 |
| 15 | 获得所需资源 | baseline start none → 2015-12-08; baseline finish none → 2015-12-09 |
| 16 | 完成分析工作 | baseline start none → 2015-12-09; baseline finish none → 2015-12-09 |
| 17 | **设计** | baseline start none → 2015-12-09; baseline finish none → 2015-12-29 |
| 18 | 审阅初步的软件规范 | baseline start none → 2015-12-09; baseline finish none → 2015-12-11 |
| 19 | 制定功能规范 | baseline start none → 2015-12-11; baseline finish none → 2015-12-18 |
| 20 | 根据功能规范开发原型 | baseline start none → 2015-12-18; baseline finish none → 2015-12-24 |
| 21 | 审阅功能规范 | baseline start none → 2015-12-24; baseline finish none → 2015-12-28 |
| 22 | 根据反馈修改功能规范 | baseline start none → 2015-12-28; baseline finish none → 2015-12-29 |
| 23 | 获得开展后续工作的批准 | baseline start none → 2015-12-29; baseline finish none → 2015-12-29 |
| 24 | 完成设计工作 | baseline start none → 2015-12-29; baseline finish none → 2015-12-29 |
| 25 | **开发** | baseline start none → 2015-12-30; baseline finish none → 2016-01-28 |
| 26 | 审阅功能规范 | baseline start none → 2015-12-30; baseline finish none → 2015-12-30 |
| 27 | 确定模块化/分层设计参数 | baseline start none → 2015-12-31; baseline finish none → 2015-12-31 |
| 28 | 分派任务给开发人员 | baseline start none → 2016-01-01; baseline finish none → 2016-01-01 |
| 29 | 编写代码 | baseline start none → 2016-01-04; baseline finish none → 2016-01-22 |
| 30 | 开发人员测试(初步调试) | baseline start none → 2016-01-07; baseline finish none → 2016-01-28 |
| 31 | 完成开发工作 | baseline start none → 2016-01-28; baseline finish none → 2016-01-28 |
| 32 | **测试** | baseline start none → 2015-12-30; baseline finish none → 2016-03-07 |
| 33 | 根据产品规范制定单元测试计划 | baseline start none → 2015-12-30; baseline finish none → 2016-01-04 |
| 34 | 根据产品规范制定整体测试计划 | baseline start none → 2015-12-30; baseline finish none → 2016-01-04 |
| 35 | **单元测试** | baseline start none → 2016-01-28; baseline finish none → 2016-02-18 |
| 36 | 审阅模块化代码 | baseline start none → 2016-01-28; baseline finish none → 2016-02-04 |
| 37 | 测试组件模块是否符合产品规范 | baseline start none → 2016-02-04; baseline finish none → 2016-02-08 |
| 38 | 找出不符合产品规范的异常情况 | baseline start none → 2016-02-08; baseline finish none → 2016-02-11 |
| 39 | 修改代码 | baseline start none → 2016-02-11; baseline finish none → 2016-02-16 |
| 40 | 重新测试经过修改的代码 | baseline start none → 2016-02-16; baseline finish none → 2016-02-18 |
| 41 | 完成单元测试 | baseline start none → 2016-02-18; baseline finish none → 2016-02-18 |
| 42 | **整体测试** | baseline start none → 2016-02-18; baseline finish none → 2016-03-07 |
| 43 | 测试模块集成情况 | baseline start none → 2016-02-18; baseline finish none → 2016-02-25 |
| 44 | 找出不符合规范的异常情况 | baseline start none → 2016-02-25; baseline finish none → 2016-02-29 |
| 45 | 修改代码 | baseline start none → 2016-02-29; baseline finish none → 2016-03-03 |
| 46 | 重新测试经过修改的代码 | baseline start none → 2016-03-03; baseline finish none → 2016-03-07 |
| 47 | 完成整体测试 | baseline start none → 2016-03-07; baseline finish none → 2016-03-07 |
| 48 | **培训** | baseline start none → 2015-12-30; baseline finish none → 2016-03-02 |
| 49 | 制定针对最终用户的培训规范 | baseline start none → 2015-12-30; baseline finish none → 2016-01-01 |
| 50 | 制定针对产品技术支持人员的培训规范 | baseline start none → 2015-12-30; baseline finish none → 2016-01-01 |
| 51 | 确定培训方法(基于计算机的培训、教室授课等) | baseline start none → 2015-12-30; baseline finish none → 2015-12-31 |
| 52 | 编写培训材料 | baseline start none → 2016-01-28; baseline finish none → 2016-02-18 |
| 53 | 研究培训材料的可用性 | baseline start none → 2016-02-18; baseline finish none → 2016-02-24 |
| 54 | 对培训材料进行最后处理 | baseline start none → 2016-02-24; baseline finish none → 2016-02-29 |
| 55 | 制定培训机制 | baseline start none → 2016-02-29; baseline finish none → 2016-03-02 |
| 56 | 完成培训材料 | baseline start none → 2016-03-02; baseline finish none → 2016-03-02 |
| 57 | **文档** | baseline start none → 2015-12-30; baseline finish none → 2016-02-10 |
| 58 | 制定“帮助”规范 | baseline start none → 2015-12-30; baseline finish none → 2015-12-30 |
| 59 | 开发“帮助”系统 | baseline start none → 2016-01-13; baseline finish none → 2016-02-03 |
| 60 | 审阅“帮助”文档 | baseline start none → 2016-02-03; baseline finish none → 2016-02-08 |
| 61 | 根据反馈修改“帮助”文档 | baseline start none → 2016-02-08; baseline finish none → 2016-02-10 |
| 62 | 制定用户手册规范 | baseline start none → 2015-12-30; baseline finish none → 2015-12-31 |
| 63 | 编写用户手册 | baseline start none → 2016-01-13; baseline finish none → 2016-02-03 |
| 64 | 审阅所有的用户文档 | baseline start none → 2016-02-03; baseline finish none → 2016-02-05 |
| 65 | 根据反馈修改用户文档 | baseline start none → 2016-02-05; baseline finish none → 2016-02-09 |
| 66 | 完成文档 | baseline start none → 2016-02-10; baseline finish none → 2016-02-10 |
| 67 | **试生产** | baseline start none → 2015-12-09; baseline finish none → 2016-03-16 |
| 68 | 确定测试群体 | baseline start none → 2015-12-09; baseline finish none → 2015-12-10 |
| 69 | 确定软件分发机制 | baseline start none → 2015-12-10; baseline finish none → 2015-12-11 |
| 70 | 安装/部署软件 | baseline start none → 2016-03-07; baseline finish none → 2016-03-08 |

| ID | Task | Other |
| --- | --- | --- |
| 71 | 获得用户反馈 | baseline start none → 2016-03-08; baseline finish none → 2016-03-15 |
| 72 | 评估测试信息 | baseline start none → 2016-03-15; baseline finish none → 2016-03-16 |
| 73 | 完成试生产工作 | baseline start none → 2016-03-16; baseline finish none → 2016-03-16 |
| 74 | **部署** | baseline start none → 2016-03-16; baseline finish none → 2016-03-23 |
| 75 | 确定最终部署策略 | baseline start none → 2016-03-16; baseline finish none → 2016-03-17 |
| 76 | 确定部署方法 | baseline start none → 2016-03-17; baseline finish none → 2016-03-18 |
| 77 | 获得部署所需资源 | baseline start none → 2016-03-18; baseline finish none → 2016-03-21 |
| 78 | 培训技术支持人员 | baseline start none → 2016-03-21; baseline finish none → 2016-03-22 |
| 79 | 部署软件 | baseline start none → 2016-03-22; baseline finish none → 2016-03-23 |
| 80 | 完成部署工作 | baseline start none → 2016-03-23; baseline finish none → 2016-03-23 |
| 81 | **实施工作结束后的回顾** | baseline start none → 2016-03-23; baseline finish none → 2016-03-28 |
| 82 | 将经验教训记录存档 | baseline start none → 2016-03-23; baseline finish none → 2016-03-24 |
| 83 | 分发给工作组成员 | baseline start none → 2016-03-24; baseline finish none → 2016-03-25 |
| 84 | 建立软件维护小组 | baseline start none → 2016-03-25; baseline finish none → 2016-03-28 |
| 85 | 完成回顾 | baseline start none → 2016-03-28; baseline finish none → 2016-03-28 |
| 86 | 软件开发模板结束 | baseline start none → 2016-03-28; baseline finish none → 2016-03-28 |

## Version 7 (saved 2015-12-06, file 8-软件开发-资源+任务列表+WBS+依赖+资源分配+工期+比较基准+跟踪.mpp)

Note of the change: 初始化项目

Last finish 2016-03-28 → 2016-04-04 (+7d). Complete tasks 0 → 6.

Changed:

| ID | Task | Start | Finish | Duration | Complete | Total float |
| --- | --- | --- | --- | --- | --- | --- |
| 1 | **项目范围规划** | 2015-11-16 A | 2015-11-19 A |  | 0% → 100% | 0d → none |
| 2 | 确定项目范围 | 2015-11-16 A | 2015-11-16 A |  | 0% → 100% | 0d → none |
| 3 | 获得项目所需资金 | 2015-11-16 A | 2015-11-17 A |  | 0% → 100% | 0d → none |
| 4 | 定义预备资源 | 2015-11-17 A | 2015-11-18 A |  | 0% → 100% | 0d → none |
| 5 | 获得核心资源 | 2015-11-18 A | 2015-11-19 A |  | 0% → 100% | 0d → none |
| 6 | 完成项目范围规划 | 2015-11-19 A | 2015-11-19 A |  | 0% → 100% | 0d → none |
| 7 | **分析/软件需求** | 2015-11-19 → 2015-11-23 A (+4d) | 2015-12-09 → 2015-12-15 (+6d) | 14d → 17d | 0% → 53% |  |
| 8 | 行为需求分析 | 2015-11-19 → 2015-11-23 A (+4d) | 2015-11-26 → 2015-11-27 A (+1d) |  | 0% → 100% | 0d → none |
| 9 | 起草初步的软件规范 | 2015-11-26 → 2015-12-02 A (+6d) | 2015-12-01 → 2015-12-07 (+6d) | 3d → 4d | 0% → 75% |  |
| 10 | 制定初步预算 | 2015-12-01 → 2015-12-08 (+7d) | 2015-12-03 → 2015-12-09 (+6d) |  |  |  |
| 11 | 工作组共同审阅软件规范/预算 | 2015-12-03 → 2015-12-10 (+7d) | 2015-12-03 → 2015-12-10 (+7d) |  |  |  |
| 12 | 根据反馈修改软件规范 | 2015-12-04 → 2015-12-10 (+6d) | 2015-12-04 → 2015-12-11 (+7d) |  |  |  |
| 13 | 制定交付期限 | 2015-12-07 → 2015-12-11 (+4d) | 2015-12-07 → 2015-12-14 (+7d) |  |  |  |
| 14 | 获得开展后续工作的批准(概念、期限和预算) | 2015-12-08 → 2015-12-14 (+6d) | 2015-12-08 → 2015-12-14 (+6d) |  |  |  |
| 15 | 获得所需资源 | 2015-12-08 → 2015-12-15 (+7d) | 2015-12-09 → 2015-12-15 (+6d) |  |  |  |
| 16 | 完成分析工作 | 2015-12-09 → 2015-12-15 (+6d) | 2015-12-09 → 2015-12-15 (+6d) |  |  |  |
| 17 | **设计** | 2015-12-09 → 2015-12-16 (+7d) | 2015-12-29 → 2016-01-05 (+7d) |  |  |  |
| 18 | 审阅初步的软件规范 | 2015-12-09 → 2015-12-16 (+7d) | 2015-12-11 → 2015-12-17 (+6d) |  |  |  |
| 19 | 制定功能规范 | 2015-12-11 → 2015-12-18 (+7d) | 2015-12-18 → 2015-12-24 (+6d) |  |  |  |
| 20 | 根据功能规范开发原型 | 2015-12-18 → 2015-12-25 (+7d) | 2015-12-24 → 2015-12-30 (+6d) |  |  |  |
| 21 | 审阅功能规范 | 2015-12-24 → 2015-12-31 (+7d) | 2015-12-28 → 2016-01-01 (+4d) |  |  |  |
| 22 | 根据反馈修改功能规范 | 2015-12-28 → 2016-01-04 (+7d) | 2015-12-29 → 2016-01-04 (+6d) |  |  |  |
| 23 | 获得开展后续工作的批准 | 2015-12-29 → 2016-01-05 (+7d) | 2015-12-29 → 2016-01-05 (+7d) |  |  |  |
| 24 | 完成设计工作 | 2015-12-29 → 2016-01-05 (+7d) | 2015-12-29 → 2016-01-05 (+7d) |  |  |  |
| 25 | **开发** | 2015-12-30 → 2016-01-05 (+6d) | 2016-01-28 → 2016-02-04 (+7d) |  |  |  |
| 26 | 审阅功能规范 | 2015-12-30 → 2016-01-05 (+6d) | 2015-12-30 → 2016-01-06 (+7d) |  |  |  |
| 27 | 确定模块化/分层设计参数 | 2015-12-31 → 2016-01-06 (+6d) | 2015-12-31 → 2016-01-07 (+7d) |  |  |  |
| 28 | 分派任务给开发人员 | 2016-01-01 → 2016-01-07 (+6d) | 2016-01-01 → 2016-01-08 (+7d) |  |  |  |
| 29 | 编写代码 | 2016-01-04 → 2016-01-08 (+4d) | 2016-01-22 → 2016-01-29 (+7d) |  |  |  |
| 30 | 开发人员测试(初步调试) | 2016-01-07 → 2016-01-14 (+7d) | 2016-01-28 → 2016-02-04 (+7d) |  |  |  |
| 31 | 完成开发工作 | 2016-01-28 → 2016-02-04 (+7d) | 2016-01-28 → 2016-02-04 (+7d) |  |  |  |
| 32 | **测试** | 2015-12-30 → 2016-01-05 (+6d) | 2016-03-07 → 2016-03-14 (+7d) |  |  |  |
| 33 | 根据产品规范制定单元测试计划 | 2015-12-30 → 2016-01-05 (+6d) | 2016-01-04 → 2016-01-11 (+7d) |  |  |  |
| 34 | 根据产品规范制定整体测试计划 | 2015-12-30 → 2016-01-05 (+6d) | 2016-01-04 → 2016-01-11 (+7d) |  |  |  |
| 35 | **单元测试** | 2016-01-28 → 2016-02-04 (+7d) | 2016-02-18 → 2016-02-25 (+7d) |  |  |  |
| 36 | 审阅模块化代码 | 2016-01-28 → 2016-02-04 (+7d) | 2016-02-04 → 2016-02-11 (+7d) |  |  |  |
| 37 | 测试组件模块是否符合产品规范 | 2016-02-04 → 2016-02-11 (+7d) | 2016-02-08 → 2016-02-15 (+7d) |  |  |  |
| 38 | 找出不符合产品规范的异常情况 | 2016-02-08 → 2016-02-15 (+7d) | 2016-02-11 → 2016-02-18 (+7d) |  |  |  |
| 39 | 修改代码 | 2016-02-11 → 2016-02-18 (+7d) | 2016-02-16 → 2016-02-23 (+7d) |  |  |  |
| 40 | 重新测试经过修改的代码 | 2016-02-16 → 2016-02-23 (+7d) | 2016-02-18 → 2016-02-25 (+7d) |  |  |  |
| 41 | 完成单元测试 | 2016-02-18 → 2016-02-25 (+7d) | 2016-02-18 → 2016-02-25 (+7d) |  |  |  |
| 42 | **整体测试** | 2016-02-18 → 2016-02-25 (+7d) | 2016-03-07 → 2016-03-14 (+7d) |  |  |  |
| 43 | 测试模块集成情况 | 2016-02-18 → 2016-02-25 (+7d) | 2016-02-25 → 2016-03-03 (+7d) |  |  |  |
| 44 | 找出不符合规范的异常情况 | 2016-02-25 → 2016-03-03 (+7d) | 2016-02-29 → 2016-03-07 (+7d) |  |  |  |
| 45 | 修改代码 | 2016-02-29 → 2016-03-07 (+7d) | 2016-03-03 → 2016-03-10 (+7d) |  |  |  |
| 46 | 重新测试经过修改的代码 | 2016-03-03 → 2016-03-10 (+7d) | 2016-03-07 → 2016-03-14 (+7d) |  |  |  |
| 47 | 完成整体测试 | 2016-03-07 → 2016-03-14 (+7d) | 2016-03-07 → 2016-03-14 (+7d) |  |  |  |
| 48 | **培训** | 2015-12-30 → 2016-01-05 (+6d) | 2016-03-02 → 2016-03-09 (+7d) |  |  |  |
| 49 | 制定针对最终用户的培训规范 | 2015-12-30 → 2016-01-05 (+6d) | 2016-01-01 → 2016-01-08 (+7d) |  |  |  |
| 50 | 制定针对产品技术支持人员的培训规范 | 2015-12-30 → 2016-01-05 (+6d) | 2016-01-01 → 2016-01-08 (+7d) |  |  |  |
| 51 | 确定培训方法(基于计算机的培训、教室授课等) | 2015-12-30 → 2016-01-05 (+6d) | 2015-12-31 → 2016-01-07 (+7d) |  |  |  |
| 52 | 编写培训材料 | 2016-01-28 → 2016-02-04 (+7d) | 2016-02-18 → 2016-02-25 (+7d) |  |  |  |
| 53 | 研究培训材料的可用性 | 2016-02-18 → 2016-02-25 (+7d) | 2016-02-24 → 2016-03-02 (+7d) |  |  |  |
| 54 | 对培训材料进行最后处理 | 2016-02-24 → 2016-03-02 (+7d) | 2016-02-29 → 2016-03-07 (+7d) |  |  |  |
| 55 | 制定培训机制 | 2016-02-29 → 2016-03-07 (+7d) | 2016-03-02 → 2016-03-09 (+7d) |  |  |  |
| 56 | 完成培训材料 | 2016-03-02 → 2016-03-09 (+7d) | 2016-03-02 → 2016-03-09 (+7d) |  |  |  |
| 57 | **文档** | 2015-12-30 → 2016-01-05 (+6d) | 2016-02-10 → 2016-02-16 (+6d) |  |  |  |
| 58 | 制定“帮助”规范 | 2015-12-30 → 2016-01-05 (+6d) | 2015-12-30 → 2016-01-06 (+7d) |  |  |  |
| 59 | 开发“帮助”系统 | 2016-01-13 → 2016-01-20 (+7d) | 2016-02-03 → 2016-02-09 (+6d) |  |  |  |
| 60 | 审阅“帮助”文档 | 2016-02-03 → 2016-02-10 (+7d) | 2016-02-08 → 2016-02-12 (+4d) |  |  |  |
| 61 | 根据反馈修改“帮助”文档 | 2016-02-08 → 2016-02-15 (+7d) | 2016-02-10 → 2016-02-16 (+6d) |  |  |  |
| 62 | 制定用户手册规范 | 2015-12-30 → 2016-01-05 (+6d) | 2015-12-31 → 2016-01-07 (+7d) |  |  |  |
| 63 | 编写用户手册 | 2016-01-13 → 2016-01-20 (+7d) | 2016-02-03 → 2016-02-09 (+6d) |  |  |  |
| 64 | 审阅所有的用户文档 | 2016-02-03 → 2016-02-10 (+7d) | 2016-02-05 → 2016-02-11 (+6d) |  |  |  |
| 65 | 根据反馈修改用户文档 | 2016-02-05 → 2016-02-12 (+7d) | 2016-02-09 → 2016-02-15 (+6d) |  |  |  |
| 66 | 完成文档 | 2016-02-10 → 2016-02-16 (+6d) | 2016-02-10 → 2016-02-16 (+6d) |  |  |  |
| 67 | **试生产** | 2015-12-09 → 2015-12-16 (+7d) | 2016-03-16 → 2016-03-23 (+7d) |  |  |  |
| 68 | 确定测试群体 | 2015-12-09 → 2015-12-16 (+7d) | 2015-12-10 → 2015-12-16 (+6d) |  |  |  |
| 69 | 确定软件分发机制 | 2015-12-10 → 2015-12-17 (+7d) | 2015-12-11 → 2015-12-17 (+6d) |  |  |  |
| 70 | 安装/部署软件 | 2016-03-07 → 2016-03-14 (+7d) | 2016-03-08 → 2016-03-15 (+7d) |  |  |  |

| ID | Task | Start | Finish |
| --- | --- | --- | --- |
| 71 | 获得用户反馈 | 2016-03-08 → 2016-03-15 (+7d) | 2016-03-15 → 2016-03-22 (+7d) |
| 72 | 评估测试信息 | 2016-03-15 → 2016-03-22 (+7d) | 2016-03-16 → 2016-03-23 (+7d) |
| 73 | 完成试生产工作 | 2016-03-16 → 2016-03-23 (+7d) | 2016-03-16 → 2016-03-23 (+7d) |
| 74 | **部署** | 2016-03-16 → 2016-03-23 (+7d) | 2016-03-23 → 2016-03-30 (+7d) |
| 75 | 确定最终部署策略 | 2016-03-16 → 2016-03-23 (+7d) | 2016-03-17 → 2016-03-24 (+7d) |
| 76 | 确定部署方法 | 2016-03-17 → 2016-03-24 (+7d) | 2016-03-18 → 2016-03-25 (+7d) |
| 77 | 获得部署所需资源 | 2016-03-18 → 2016-03-25 (+7d) | 2016-03-21 → 2016-03-28 (+7d) |
| 78 | 培训技术支持人员 | 2016-03-21 → 2016-03-28 (+7d) | 2016-03-22 → 2016-03-29 (+7d) |
| 79 | 部署软件 | 2016-03-22 → 2016-03-29 (+7d) | 2016-03-23 → 2016-03-30 (+7d) |
| 80 | 完成部署工作 | 2016-03-23 → 2016-03-30 (+7d) | 2016-03-23 → 2016-03-30 (+7d) |
| 81 | **实施工作结束后的回顾** | 2016-03-23 → 2016-03-30 (+7d) | 2016-03-28 → 2016-04-04 (+7d) |
| 82 | 将经验教训记录存档 | 2016-03-23 → 2016-03-30 (+7d) | 2016-03-24 → 2016-03-31 (+7d) |
| 83 | 分发给工作组成员 | 2016-03-24 → 2016-03-31 (+7d) | 2016-03-25 → 2016-04-01 (+7d) |
| 84 | 建立软件维护小组 | 2016-03-25 → 2016-04-01 (+7d) | 2016-03-28 → 2016-04-04 (+7d) |
| 85 | 完成回顾 | 2016-03-28 → 2016-04-04 (+7d) | 2016-03-28 → 2016-04-04 (+7d) |
| 86 | 软件开发模板结束 | 2016-03-28 → 2016-04-04 (+7d) | 2016-03-28 → 2016-04-04 (+7d) |
